# 项目进度

Schedule from MS Project, 2013-07-08 to 2013-07-30, A marks actual dates.

## Calendars

- 标准: Mon-Fri 08:00-12:00, 13:00-17:00; Sat-Sun off.

## Resources

| Resource |
| --- |
| 张建华 |
| 卢佳 |
| 李智林 |
| 周雯 |
| 陈亮 |

## Schedule

| ID | WBS | Task | Duration | Start | Finish | Predecessors | Complete | Remaining | Total slack | Free slack | Constraint | Resources | Work | Actual work |
| --- | --- | --- | --- | --- | --- | --- | --- | --- | --- | --- | --- | --- | --- | --- |
| 1 | 1 | **人力资源模块** | 17d? | 2013-07-08 A | 2013-07-30 |  | 17% | 14.07d? | 1d |  |  |  | 256h | 64h |
| 2 | 1.1 | 内部需求 | 2d | 2013-07-08 A | 2013-07-09 A |  | 100% |  |  |  | start no earlier than 2013-07-08 | 张建华; 卢佳 | 32h | 32h |
| 3 | 1.2 | 需求调研 | 2d | 2013-07-10 A | 2013-07-11 A | 2 | 100% |  |  |  |  | 张建华 | 16h | 16h |
| 4 | 1.3 | 需求汇总 | 1d | 2013-07-12 A | 2013-07-12 A | 3 | 100% |  |  |  |  | 李智林; 卢佳 | 16h | 16h |
| 5 | 1.4 | **原型设计** | 3d | 2013-07-15 | 2013-07-17 | 4 |  |  | 0d |  |  |  | 48h |  |
| 6 | 1.4.1 | 部门岗位员工固定资产 | 3d | 2013-07-15 | 2013-07-17 |  |  |  | 0d |  |  | 卢佳 | 24h |  |
| 7 | 1.4.2 | 考勤机构员工合同 | 3d | 2013-07-15 | 2013-07-17 |  |  |  | 12d |  |  | 李智林 | 24h |  |
| 8 | 1.5 | 评审原型 | 1d | 2013-07-18 | 2013-07-18 | 6 |  |  | 0d |  |  | 张建华 | 8h |  |
| 9 | 1.6 | 美工网页设计 | 5d? | 2013-07-19 | 2013-07-25 | 8 |  |  | 4d |  |  | 周雯 | 40h |  |
| 10 | 1.7 | 系统设计 | 1d | 2013-07-19 | 2013-07-19 | 8 |  |  | 0d |  |  | 陈亮 | 8h |  |
| 11 | 1.8 | **开发编码** | 5d? | 2013-07-22 | 2013-07-26 |  |  |  | 0d |  |  |  | 72h |  |
| 12 | 1.8.1 | 机构 | 1d? | 2013-07-22 | 2013-07-22 | 10 |  |  | 0d |  |  | 李智林 | 8h |  |
| 13 | 1.8.2 | 部门 | 1d? | 2013-07-22 | 2013-07-22 | 10 |  |  | 3d | 0d |  | 卢佳 | 8h |  |
| 14 | 1.8.3 | 岗位 | 1d? | 2013-07-23 | 2013-07-23 | 13 |  |  | 3d | 0d |  | 卢佳 | 8h |  |
| 15 | 1.8.4 | 员工 | 1d? | 2013-07-24 | 2013-07-24 | 14 |  |  | 3d | 0d |  | 卢佳 | 8h |  |
| 16 | 1.8.5 | 固定资产 | 1d? | 2013-07-25 | 2013-07-25 | 15 |  |  | 3d |  |  | 卢佳 | 8h |  |
| 17 | 1.8.6 | 员工合同 | 1d? | 2013-07-23 | 2013-07-23 | 12 |  |  | 0d |  |  | 李智林 | 8h |  |
| 18 | 1.8.7 | 考勤 | 3d? | 2013-07-24 | 2013-07-26 | 17 |  |  | 0d |  |  | 李智林 | 24h |  |
| 19 | 1.9 | 测试与bug | 1d | 2013-07-29 | 2013-07-29 | 18 |  |  | 0d |  |  | 张建华 | 8h |  |
| 20 | 1.10 | 发布及线上测试 | 1d | 2013-07-30 | 2013-07-30 | 19 |  |  | 0d |  |  | 张建华 | 8h |  |
